Schedule from MS Project, 2011-10-05 to 2011-10-06.
bingosoft

## Calendars

- 标准: Mon-Fri 08:00-12:00, 13:00-17:00; Sat-Sun off.

## Resources

| Resource |
| --- |
| 杨红康 |
| 刘征战 |
| 郑国江 |

## Schedule

| ID | WBS | Task | Type | Duration | Start | Finish | Predecessors | Total slack | Resources | Work |
| --- | --- | --- | --- | --- | --- | --- | --- | --- | --- | --- |
| 1 | 1 | **管网SACADA系统** |  | 2d? | 2011-10-05 | 2011-10-06 |  | 0d |  | 32h |
| 2 | 1.1 | 项目前期 |  | 1d? | 2011-10-05 | 2011-10-05 |  | 1d | 刘征战 | 8h |
| 3 | 1.2 | **演示系统开发** |  | 1d? | 2011-10-05 | 2011-10-05 |  | 0d |  | 24h |
| 4 | 1.2.1 | 权限 |  | 1d? | 2011-10-05 | 2011-10-05 |  | 0d | 杨红康 | 8h |
| 5 | 1.2.2 | 图表 |  | 1d? | 2011-10-05 | 2011-10-05 |  | 0d | 刘征战 | 8h |
| 6 | 1.2.3 | 列表 |  | 1d? | 2011-10-05 | 2011-10-05 |  | 0d | 郑国江 | 8h |
| 7 | 1.2.4 | 交付演示系统 | milestone | 0d | 2011-10-05 | 2011-10-05 |  | 1d |  |  |
| 8 | 1.3 | **正式系统开发** |  | 1d? | 2011-10-06 | 2011-10-06 | 3 | 0d |  |  |
| 9 | 1.3.1 | 系统交付 |  | 1d? | 2011-10-06 | 2011-10-06 |  | 0d |  |  |
